# FIRST_2994_2013_SW

Schedule from MS Project, 2013-01-05 to 2013-04-08, 3.5 hours a day.

## Calendars

- Standard: Mon 16:00-18:00, 18:30-20:00; Tue off; Wed-Thu 16:00-18:00, 18:30-20:00; Fri off; Sat 16:00-18:00, 18:30-20:00; Sun off.

## Resources

| Resource | Group |
| --- | --- |
| Plyboy | Robot |
| Swish | Robot |
| Whammo | Robot |
| Jack McCracken | Software/Electrical |
| Gabrielle Genereux | Software/Electrical |
| Will Prado | Software/Electrical |
| Celina Vivian | Software/Electrical |
| Ross Andress | Software/Electrical |
| Laurence Cunnane | Software/Electrical |
| Kyle Bergeron | Software/Electrical |
| Ken James | Mentor |
| Dan Williston | Mentor |
| Shahrukh Alavi | Mentor |
| Nicholas Loomes | Mechanical Design |
| Sean Frank | Mechanical Design |
| Yannick Brisebois | Mechanical Design |
| Paolo Vargas | Mechanical Design |
| Sam McCracken | Mechanical Design |
| Joshua Garbutt-St. Jean | Mechanical Design |
| Marissa Law | Mechanical Design |
| Daniel Garner | Mechanical Design |
| Tyler Cooke | Mechanical Design |
| Bailey Kulla | Mechanical Design |
| Gabriele Leduc | Mechanical Design |
| Matthew Bailey | Mentor |
| Phil Genereux | Mentor |
| Andrew Verheyden | Fabrication and Assembly |
| Brandon Bates | Fabrication and Assembly |
| Bruno Chiaragato | Fabrication and Assembly |
| James Carr | Fabrication and Assembly |
| Liam Pelly | Fabrication and Assembly |
| David Gourevitch | Fabrication and Assembly |
| James Prado | Fabrication and Assembly |
| Robert Myszka | Fabrication and Assembly |
| Blair Hulaj | Fabrication and Assembly |
| Jordan Parisee | Fabrication and Assembly |
| Konnor Wood | Fabrication and Assembly |
| Paul McDonough | Mentor |
| Hugh Carry | Mentor |

## Schedule

| ID | WBS | Task | Type | Duration | Start | Finish | Predecessors | Total slack | Free slack | Constraint | Resources | Work |
| --- | --- | --- | --- | --- | --- | --- | --- | --- | --- | --- | --- | --- |
| 1 | 1 | **Software Infrastructure** |  | 44d | 2013-01-05 | 2013-03-21 |  | 9.86d |  |  |  | 82.95h |
| 2 | 1.1 | Install Labview/Development Environment |  | 6d | 2013-01-05 | 2013-01-14 |  | 9.86d | 0d |  | Celina Vivian [10%]; Gabrielle Genereux [10%]; Jack McCracken [10%]; Kyle Bergeron [10%]; Laurence Cunnane [10%]; Ross Andress [10%]; Will Prado [10%] | 14.7h |
| 3 | 1.2 | Github Repository Setup |  | 2d | 2013-01-05 | 2013-01-07 |  | 38.86d | 4d | start no earlier than 2013-01-05 | Jack McCracken [90%]; Dan Williston | 13.3h |
| 4 | 1.3 | GitHub Training |  | 1d | 2013-01-16 | 2013-01-16 | 2, 3 | 34.86d | 0d |  | Celina Vivian; Gabrielle Genereux; Jack McCracken [90%]; Kyle Bergeron; Laurence Cunnane; Ross Andress; Will Prado | 24.15h |
| 5 | 1.4 | Handle Github Pull Requests |  | 38d | 2013-01-16 | 2013-03-21 | 2 | 9.86d |  |  | Jack McCracken [10%] | 13.3h |
| 6 | 1.5 | Robot Simulator Research |  | 1d | 2013-01-17 | 2013-01-17 | 2, 4 | 36.86d | 0d |  | Celina Vivian | 3.5h |
| 7 | 1.6 | FIRST Touch I/O Module |  | 1d | 2013-01-17 | 2013-01-17 | 2, 4 | 45.86d |  |  | Will Prado | 3.5h |
| 8 | 1.7 | Labview Programming |  | 1d | 2013-01-19 | 2013-01-19 | 2, 6, 4 | 36.86d | 0d |  | Celina Vivian; Gabrielle Genereux | 7h |
| 9 | 1.8 | Robot Builder |  | 1d | 2013-01-17 | 2013-01-17 | 2, 4 | 45.86d |  |  | Ross Andress | 3.5h |
| 10 | 2 | Software Development Start | milestone | 0d | 2013-01-16 | 2013-01-16 | 2, 3, 4 | 34.86d | 0d |  |  |  |
| 11 | 3 | Software for Compressed Air Charging |  | 1d | 2013-01-17 | 2013-01-17 | 10 | 44.86d | 0d |  | Kyle Bergeron | 3.5h |
| 12 | 4 | **Software for Autonomous** |  | 5d? | 2013-01-17 | 2013-01-24 |  | 35.86d |  |  |  | 26.6h |
| 13 | 4.1 | Dead Reckoning |  | 3d | 2013-01-19 | 2013-01-23 | 10, 20 | 34.86d | 0d |  | Will Prado; Jack McCracken [90%] | 19.95h |
| 14 | 4.2 | Collecting Frisbees from Floor |  | 1d? | 2013-01-17 | 2013-01-17 | 10 | 42.86d | 0d |  |  |  |
| 15 | 4.3 | Shooter (Fixed Speed) |  | 1d | 2013-01-24 | 2013-01-24 | 10, 13 | 34.86d | 0d |  | Will Prado; Jack McCracken [90%] | 6.65h |
| 16 | 4.4 | Autonomous Coding Complete | milestone | 0d | 2013-01-24 | 2013-01-24 | 13, 14, 15 | 41.86d | 4d |  |  |  |
| 17 | 5 | **Software for Teleop** |  | 9d? | 2013-01-16 | 2013-01-31 |  | 34.86d |  |  |  | 50.75h |
| 18 | 5.1 | **R/C Driving** |  | 4d? | 2013-01-17 | 2013-01-23 | 10 | 34.86d | 0d |  |  | 13.65h |
| 19 | 5.1.1 | Document R/C Driving |  | 2d | 2013-01-19 | 2013-01-21 | 20 | 39.86d | 0d |  | Kyle Bergeron | 7h |
| 20 | 5.1.2 | Arcade Drive |  | 1d | 2013-01-17 | 2013-01-17 |  | 34.86d | 0d |  | Jack McCracken [90%] | 3.15h |
| 21 | 5.1.3 | Manual Supershifters |  | 1d | 2013-01-23 | 2013-01-23 | 20, 19 | 39.86d | 0d |  | Kyle Bergeron | 3.5h |
| 22 | 5.1.4 | Commit Manual R/C Driving to GitHub | milestone | 0d | 2013-01-23 | 2013-01-23 | 21 | 39.86d |  |  | Kyle Bergeron |  |
| 23 | 5.1.5 | Automatic Supershifters |  | 1d? | 2013-01-17 | 2013-01-17 |  | 42.86d |  |  |  |  |
| 24 | 5.1.6 | Commit Automatic Supershifters |  | 1d? | 2013-01-17 | 2013-01-17 |  | 42.86d |  |  |  |  |
| 25 | 5.2 | R/C Frisbees from Feeder Stations | milestone | 0d | 2013-01-16 | 2013-01-16 | 10 | 43.86d | 0d |  |  |  |

| ID | WBS | Task | Type | Duration | Start | Finish | Predecessors | Total slack | Free slack | Constraint | Resources | Work |
| --- | --- | --- | --- | --- | --- | --- | --- | --- | --- | --- | --- | --- |
| 26 | 5.3 | **R/C Frisbees from Floor** |  | 3d | 2013-01-21 | 2013-01-24 | 10 | 36.86d | 0d |  |  | 10.5h |
| 27 | 5.3.1 | Document R/C Frisbees from Floor |  | 1d | 2013-01-21 | 2013-01-21 | 8 | 36.86d | 0d |  | Gabrielle Genereux | 3.5h |
| 28 | 5.3.2 | Code R/C Frisbees from Floor |  | 2d | 2013-01-23 | 2013-01-24 | 27 | 36.86d | 0d |  | Gabrielle Genereux | 7h |
| 29 | 5.3.3 | Commit R/C Frisbees from Floor to GitHub | milestone | 0d | 2013-01-24 | 2013-01-24 | 28 | 36.86d | 0d |  | Gabrielle Genereux |  |
| 30 | 5.4 | **R/C Shooting** |  | 4d? | 2013-01-26 | 2013-01-31 | 10, 15 | 34.86d | 0d |  |  | 19.6h |
| 31 | 5.4.1 | Document R/C Shooting |  | 1d? | 2013-01-26 | 2013-01-26 |  | 34.86d | 0d |  | Jack McCracken [90%] | 3.15h |
| 32 | 5.4.2 | Code Shooter Motor Control |  | 1d? | 2013-01-28 | 2013-01-28 | 31 | 34.86d | 0d |  | Jack McCracken [90%] | 3.15h |
| 33 | 5.4.3 | Prototype PID Speed Control on Plyboy |  | 1d? | 2013-01-30 | 2013-01-30 | 32 | 34.86d | 0d |  | Jack McCracken [90%] | 3.15h |
| 34 | 5.4.4 | Push Shooter Motor Control Code to GitHub |  | 1d? | 2013-01-31 | 2013-01-31 | 33 | 34.86d |  |  | Jack McCracken [90%] | 3.15h |
| 35 | 5.4.5 | Code Index Motor |  | 1d? | 2013-01-26 | 2013-01-26 | 29 | 36.86d | 0d |  | Gabrielle Genereux | 3.5h |
| 36 | 5.4.6 | Push Index Motor Control Code to GitHub |  | 1d? | 2013-01-28 | 2013-01-28 | 35 | 36.86d |  |  | Gabrielle Genereux | 3.5h |
| 37 | 5.5 | Climbing |  | 1d? | 2013-01-17 | 2013-01-17 | 10 | 44.86d | 0d |  |  |  |
| 38 | 5.6 | Camera View |  | 2d | 2013-01-21 | 2013-01-23 | 10, 8 | 42.86d | 5d |  | Celina Vivian | 7h |
| 39 | 5.7 | Teleop Coding Complete | milestone | 0d | 2013-01-31 | 2013-01-31 | 18, 25, 26, 30, 37, 38 | 37.86d | 0d |  |  |  |
| 40 | 6 | Coding Complete | milestone | 0d | 2013-01-31 | 2013-01-31 | 16, 39 | 37.86d |  |  |  |  |
| 41 | 7 | **Build Season Milestones** |  | 26d | 2013-01-05 | 2013-02-19 |  | 27.86d |  |  |  |  |
| 42 | 7.1 | Kickoff | milestone | 0d | 2013-01-05 | 2013-01-05 |  | 53.86d |  |  |  |  |
| 43 | 7.2 | Stop-Build Day | milestone | 0d | 2013-02-19 | 2013-02-19 |  | 27.86d |  | start no earlier than 2013-02-19 |  |  |
| 44 | 8 | **Hardware Milestones** |  | 21.29d | 2013-01-05 | 2013-02-11 |  | 31.57d |  |  |  |  |
| 45 | 8.1 | Plyboy Compressed Air Charging System Done | milestone | 0d | 2013-01-05 | 2013-01-05 |  | 52.86d | 8d |  |  |  |
| 46 | 8.2 | Whammo Compressed Air Charging System Done | milestone | 0d | 2013-01-05 | 2013-01-05 |  | 52.86d | 8d |  |  |  |
| 47 | 8.3 | Whammo Driving Mechanism Done | milestone | 0d | 2013-01-05 | 2013-01-05 |  | 50.86d | 11d |  |  |  |
| 48 | 8.4 | Whammo Frisbee Collector Done | milestone | 0d | 2013-01-05 | 2013-01-05 |  | 50.86d | 7d |  |  |  |
| 49 | 8.5 | Whammo Shooter Done | milestone | 0d | 2013-01-05 | 2013-01-05 |  | 50.86d | 12d |  |  |  |
| 50 | 8.6 | Whammo Climb Mechanism Done | milestone | 0d | 2013-01-05 | 2013-01-05 |  | 52.86d | 8d |  |  |  |
| 51 | 8.7 | Whammo Hardware Complete | milestone | 0d | 2013-02-11 | 2013-02-11 |  | 30.57d | 0d | finish no earlier than 2013-02-11 |  |  |

| ID | WBS | Task | Type | Duration | Start | Finish | Predecessors | Total slack | Free slack | Constraint | Resources | Work |
| --- | --- | --- | --- | --- | --- | --- | --- | --- | --- | --- | --- | --- |
| 52 | 9 | **Software Unit Testing** |  | 10d? | 2013-01-17 | 2013-02-02 |  | 36.86d |  |  |  | 38.5h |
| 53 | 9.1 | Unit Test Compressed Air Charging on Plyboy |  | 1d? | 2013-01-19 | 2013-01-19 | 45, 11 | 44.86d |  |  | Plyboy | 3.5h |
| 54 | 9.2 | Unit Test Compressed Air Charging on Whammo |  | 1d? | 2013-01-19 | 2013-01-19 | 46, 11 | 44.86d |  |  | Whammo | 3.5h |
| 55 | 9.3 | Unit Test Autonomous Dead Reckoning on Swish |  | 1d? | 2013-01-24 | 2013-01-24 | 13 | 39.86d | 1d |  | Swish | 3.5h |
| 56 | 9.4 | Unit Test Autonomous Dead Reckoning on Whammo |  | 1d? | 2013-01-24 | 2013-01-24 | 13, 47 | 39.86d | 1d |  | Whammo | 3.5h |
| 57 | 9.5 | Unit Test Autonomous Frisbee Collection from Floor |  | 1d? | 2013-01-19 | 2013-01-19 | 14, 48 | 42.86d | 4d |  | Whammo | 3.5h |
| 58 | 9.6 | Unit Test Autonomous Shooter |  | 1d? | 2013-01-26 | 2013-01-26 | 15, 49 | 38.86d | 0d |  | Whammo | 3.5h |
| 59 | 9.7 | Unit Test R/C Driving |  | 1d? | 2013-01-24 | 2013-01-24 | 18, 47 | 39.86d | 5d |  | Whammo | 3.5h |
| 60 | 9.8 | Unit Test R/C Frisbees from Feeder Station |  | 1d? | 2013-01-17 | 2013-01-17 | 25, 48 | 43.86d | 9d |  | Whammo | 3.5h |
| 61 | 9.9 | Unit Test R/C Frisbees from Floor |  | 1d? | 2013-01-26 | 2013-01-26 | 26, 48 | 38.86d | 4d |  | Whammo | 3.5h |
| 62 | 9.10 | Unit test R/C Shooting |  | 1d? | 2013-02-02 | 2013-02-02 | 30, 49 | 34.86d | 0d |  | Whammo | 3.5h |
| 63 | 9.11 | Unit Test Climbing |  | 1d? | 2013-01-19 | 2013-01-19 | 37, 50 | 44.86d |  |  | Whammo | 3.5h |
| 64 | 9.12 | Unit Test Autonomous Software Done | milestone | 0d | 2013-01-26 | 2013-01-26 | 55, 56, 57, 58 | 38.86d | 8.29d |  |  |  |
| 65 | 9.13 | Unit Test Teleop Software Done | milestone | 0d | 2013-02-02 | 2013-02-02 | 59, 60, 61, 62 | 34.86d | 4.29d |  |  |  |
| 66 | 10 | **Integration Testing** |  | 2d | 2013-02-11 | 2013-02-14 |  | 30.57d |  |  |  |  |
| 67 | 10.1 | Integration Test Autonomous |  | 2d | 2013-02-11 | 2013-02-14 | 64, 51 | 30.57d |  |  |  |  |
| 68 | 10.2 | Integration Test Teleop |  | 2d | 2013-02-11 | 2013-02-14 | 65, 51 | 30.57d |  |  |  |  |
| 69 | 11 | **Competition Season** |  | 18.86d | 2013-03-07 | 2013-04-08 |  | 0d |  |  |  |  |
| 70 | 11.1 | FRC Greater Toronto East Regional |  | 6.86d | 2013-03-07 | 2013-03-18 |  | 12d |  | start no earlier than 2013-03-07 |  |  |
| 71 | 11.2 | FRC Greater Toronto West Regional |  | 6.86d | 2013-03-28 | 2013-04-08 |  | 0d |  | start no earlier than 2013-03-28 |  |  |
| 72 | 12 | **Time off** |  | 41d | 2013-01-24 | 2013-04-04 |  | 1.86d |  |  |  |  |
| 73 | 12.1 | Dan unavailable 1 |  | 1d | 2013-02-09 | 2013-02-09 |  | 32.86d |  | start no earlier than 2013-02-08 |  |  |
| 74 | 12.2 | **Kyle Unavailable** |  | 41d | 2013-01-24 | 2013-04-04 |  | 1.86d |  |  |  |  |
| 75 | 12.2.1 | Kyle Unavailable 1 |  | 1d | 2013-01-24 | 2013-01-24 |  | 41.86d |  | start no earlier than 2013-01-24 |  |  |
| 76 | 12.2.2 | Kyle Unavailable 2 |  | 1d | 2013-01-31 | 2013-01-31 |  | 37.86d |  | start no earlier than 2013-01-31 |  |  |
| 77 | 12.2.3 | Kyle Unavailable 3 |  | 1d | 2013-02-07 | 2013-02-07 |  | 33.86d |  | start no earlier than 2013-02-07 |  |  |
| 78 | 12.2.4 | Kyle Unavailable 4 |  | 1d | 2013-02-14 | 2013-02-14 |  | 29.86d |  | start no earlier than 2013-02-14 |  |  |
| 79 | 12.2.5 | Kyle Unavailable 5 |  | 1d | 2013-02-21 | 2013-02-21 |  | 25.86d |  | start no earlier than 2013-02-21 |  |  |
| 80 | 12.2.6 | Kyle Unavailable 6 |  | 1d | 2013-02-28 | 2013-02-28 |  | 21.86d |  | start no earlier than 2013-02-28 |  |  |
| 81 | 12.2.7 | Kyle Unavailable 7 |  | 1d | 2013-03-07 | 2013-03-07 |  | 17.86d |  | start no earlier than 2013-03-07 |  |  |
| 82 | 12.2.8 | Kyle Unavailable 8 |  | 1d | 2013-03-14 | 2013-03-14 |  | 13.86d |  | start no earlier than 2013-03-14 |  |  |
| 83 | 12.2.9 | Kyle Unavailable 9 |  | 1d | 2013-03-21 | 2013-03-21 |  | 9.86d |  | start no earlier than 2013-03-21 |  |  |
| 84 | 12.2.10 | Kyle Unavailable 10 |  | 1d | 2013-03-28 | 2013-03-28 |  | 5.86d |  | start no earlier than 2013-03-28 |  |  |
| 85 | 12.2.11 | Kyle Unavailable 11 |  | 1d | 2013-04-04 | 2013-04-04 |  | 1.86d |  | start no earlier than 2013-04-04 |  |  |
